element_id,name,unit,dia_in,length_ft,start_xy,end_xy,invert_start_ft,invert_end_ft,slope_in_per_ft,slope_status,activity,act_start,act_finish,verification,takeoff_line,issues
PLM-B101-NEW-PIPE-0001,NEW_ABS_B101_2in_lav_n,B101,2.0,11.9202,"[14.766, 0.887]","[23.248, 4.813]",-3.3181,-3.5664,0.3187,DEVIATES_FROM_DOCUMENTED,A1040,2027-01-18,2027-01-27,DOCUMENT_DERIVED,TO-093,VDC-P2-004
PLM-B101-NEW-PIPE-0002,NEW_ABS_B101_2in_lav_s,B101,2.0,3.4621,"[20.735, 14.267]","[23.248, 16.647]",-3.2477,-3.3199,0.25,PASS,A1040,2027-01-18,2027-01-27,DOCUMENT_DERIVED,TO-093,
PLM-B101-NEW-PIPE-0003,NEW_ABS_B101_3in_bath_n,B101,3.0,5.09,"[18.222, 11.093]","[23.248, 11.887]",-3.3547,-3.4607,0.25,PASS,A1040,2027-01-18,2027-01-27,DOCUMENT_DERIVED,TO-094,
PLM-B101-NEW-PIPE-0004,NEW_ABS_B101_3in_bath_s,B101,3.0,4.1614,"[19.164, 15.853]","[23.248, 16.647]",-3.2749,-3.3615,0.25,PASS,A1040,2027-01-18,2027-01-27,DOCUMENT_DERIVED,TO-094,
PLM-B101-NEW-PIPE-0005,NEW_ABS_B101_3in_laundry,B101,3.0,1.0196,"[22.306, 28.108]","[23.248, 27.72]",-3.1096,-3.1308,0.25,PASS,A1040,2027-01-18,2027-01-27,DOCUMENT_DERIVED,TO-094,
PLM-B101-NEW-PIPE-0006,NEW_ABS_B101_4in_MAIN,B101,4.0,45.4323,"[36.907, 38.982]","[23.248, 0.0]",-2.8037,-3.75,0.2749,PASS,A1040,2027-01-18,2027-01-27,DOCUMENT_DERIVED,TO-095,
PLM-B101-NEW-PIPE-0007,NEW_ABS_B101_6in_LATERAL_18IN_LIMIT,B101,6.0,1.5003,"[23.248, 0.0]","[23.248, -1.5]",-3.8333,-3.8646,0.25,PASS,A1040,2027-01-18,2027-01-27,DOCUMENT_DERIVED,TO-096,
PLM-B102-NEW-PIPE-0001,NEW_ABS_B102_2in_lav_n,B102,2.0,7.2655,"[62.979, 0.95]","[69.208, 4.687]",-3.3718,-3.5231,0.25,PASS,A1040,2027-01-18,2027-01-27,DOCUMENT_DERIVED,TO-104,
PLM-B102-NEW-PIPE-0002,NEW_ABS_B102_2in_lav_s,B102,2.0,6.4937,"[61.625, 15.853]","[67.583, 18.432]",-3.0994,-3.2347,0.25,PASS,A1040,2027-01-18,2027-01-27,DOCUMENT_DERIVED,TO-104,
PLM-B102-NEW-PIPE-0003,NEW_ABS_B102_3in_bath_n,B102,3.0,4.7565,"[63.792, 11.887]","[68.396, 13.077]",-3.2901,-3.3892,0.25,PASS,A1040,2027-01-18,2027-01-27,DOCUMENT_DERIVED,TO-105,
PLM-B102-NEW-PIPE-0004,NEW_ABS_B102_3in_bath_s,B102,3.0,5.1278,"[62.708, 16.845]","[67.583, 18.432]",-3.1695,-3.2763,0.25,PASS,A1040,2027-01-18,2027-01-27,DOCUMENT_DERIVED,TO-105,
PLM-B102-NEW-PIPE-0005,NEW_ABS_B102_3in_kitchen,B102,3.0,1.3333,"[50.25, 40.147]","[51.333, 39.37]",-2.6717,-2.6995,0.25,PASS,A1040,2027-01-18,2027-01-27,DOCUMENT_DERIVED,TO-105,
PLM-B102-NEW-PIPE-0006,NEW_ABS_B102_3in_laundry,B102,3.0,1.1511,"[64.333, 27.72]","[65.417, 27.332]",-3.0615,-3.0855,0.25,PASS,A1040,2027-01-18,2027-01-27,DOCUMENT_DERIVED,TO-105,
PLM-B102-NEW-PIPE-0007,NEW_ABS_B102_4in_MAIN,B102,4.0,48.4342,"[51.333, 39.37]","[74.26, 0.0]",-2.7412,-3.75,0.2657,PASS,A1040,2027-01-18,2027-01-27,DOCUMENT_DERIVED,TO-106,
PLM-B102-NEW-PIPE-0008,NEW_ABS_B102_6in_LATERAL_18IN_LIMIT,B102,6.0,1.5003,"[74.26, 0.0]","[74.26, -1.5]",-3.8333,-3.8646,0.25,PASS,A1040,2027-01-18,2027-01-27,DOCUMENT_DERIVED,TO-107,
PLM-B103-NEW-PIPE-0001,NEW_ABS_B103_2in_lav_n,B103,2.0,6.5059,"[94.987, 0.95]","[89.754, 4.813]",-3.4309,-3.5664,0.25,PASS,A1040,2027-01-18,2027-01-27,DOCUMENT_DERIVED,TO-115,
PLM-B103-NEW-PIPE-0002,NEW_ABS_B103_2in_lav_s,B103,2.0,9.131,"[98.567, 15.06]","[89.754, 17.44]",-3.1131,-3.3033,0.25,PASS,A1040,2027-01-18,2027-01-27,DOCUMENT_DERIVED,TO-115,
PLM-B103-NEW-PIPE-0003,NEW_ABS_B103_3in_bath_n,B103,3.0,5.7986,"[95.538, 11.887]","[89.754, 12.283]",-3.3317,-3.4524,0.25,PASS,A1040,2027-01-18,2027-01-27,DOCUMENT_DERIVED,TO-116,
PLM-B103-NEW-PIPE-0004,NEW_ABS_B103_3in_bath_s,B103,3.0,7.7541,"[97.466, 16.647]","[89.754, 17.44]",-3.1835,-3.345,0.25,PASS,A1040,2027-01-18,2027-01-27,DOCUMENT_DERIVED,TO-116,
PLM-B103-NEW-PIPE-0005,NEW_ABS_B103_3in_laundry,B103,3.0,0.337,"[99.945, 27.72]","[99.669, 27.526]",-3.0433,-3.0503,0.25,PASS,A1040,2027-01-18,2027-01-27,DOCUMENT_DERIVED,TO-116,
PLM-B103-NEW-PIPE-0006,NEW_ABS_B103_4in_MAIN,B103,4.0,31.5901,"[99.669, 27.526]","[89.754, 0.0]",-3.092,-3.75,0.2699,PASS,A1040,2027-01-18,2027-01-27,DOCUMENT_DERIVED,TO-117,
PLM-B103-NEW-PIPE-0007,NEW_ABS_B103_4in_RAISED_FLOOR,B103,4.0,30.6833,"[106.83, 40.147]","[123.392, 28.108]",0.25,-1.8333,1.221,NOT_DOCUMENTED,A1040,2027-01-18,2027-01-27,FIELD_VERIFY_REQUIRED,TO-117,VDC-P2-005
PLM-B103-NEW-PIPE-0008,NEW_ABS_B103_6in_LATERAL_18IN_LIMIT,B103,6.0,1.5003,"[89.754, 0.0]","[89.754, -1.5]",-3.8333,-3.8646,0.25,PASS,A1040,2027-01-18,2027-01-27,DOCUMENT_DERIVED,TO-118,
PLM-B104-NEW-PIPE-0001,NEW_ABS_B104_2in_lav_n,B104,2.0,5.1846,"[142.237, 0.95]","[138.781, 4.813]",-3.4584,-3.5664,0.25,PASS,A1040,2027-01-18,2027-01-27,DOCUMENT_DERIVED,TO-127,
PLM-B104-NEW-PIPE-0002,NEW_ABS_B104_2in_lav_s,B104,2.0,3.6141,"[135.639, 15.457]","[138.781, 17.242]",-3.2322,-3.3075,0.25,PASS,A1040,2027-01-18,2027-01-27,DOCUMENT_DERIVED,TO-127,
PLM-B104-NEW-PIPE-0003,NEW_ABS_B104_3in_bath_n,B104,3.0,3.4793,"[142.237, 11.887]","[138.781, 12.283]",-3.38,-3.4524,0.25,PASS,A1040,2027-01-18,2027-01-27,DOCUMENT_DERIVED,TO-128,
PLM-B104-NEW-PIPE-0004,NEW_ABS_B104_3in_bath_s,B104,3.0,2.2787,"[140.98, 16.647]","[138.781, 17.242]",-3.3017,-3.3491,0.25,PASS,A1040,2027-01-18,2027-01-27,DOCUMENT_DERIVED,TO-128,
PLM-B104-NEW-PIPE-0005,NEW_ABS_B104_3in_laundry,B104,3.0,10.1314,"[128.652, 27.72]","[138.781, 27.72]",-2.9198,-3.1308,0.25,PASS,A1040,2027-01-18,2027-01-27,DOCUMENT_DERIVED,TO-128,
PLM-B104-NEW-PIPE-0006,NEW_ABS_B104_4in_MAIN,B104,4.0,43.5132,"[128.132, 39.37]","[138.781, 0.0]",-2.8437,-3.75,0.2667,PASS,A1040,2027-01-18,2027-01-27,DOCUMENT_DERIVED,TO-129,
PLM-B104-NEW-PIPE-0007,NEW_ABS_B104_6in_LATERAL_18IN_LIMIT,B104,6.0,1.5003,"[138.781, 0.0]","[138.781, -1.5]",-3.8333,-3.8646,0.25,PASS,A1040,2027-01-18,2027-01-27,DOCUMENT_DERIVED,TO-130,
